# CokieReader-CronogramaDoProjeto

Schedule from ProjectLibre, 2017-03-01 to 2017-07-19.

## Calendars

- Padrão: Mon-Fri 08:00-12:00, 13:00-17:00; Sat-Sun off.

## Resources

| Resource | Rate | Cost per use |
| --- | --- | --- |
| Não atribuído |  |  |
| Carlos Eduardo Binoti de Castro | 15 |  |
| Rafael Vargas | 70 |  |
| Equipamento 1 |  | 20 |
| Equipamento 2 |  | 20 |

## Schedule

| ID | WBS | Task | Duration | Start | Finish | Predecessors | Baseline start | Baseline finish | Total slack | Constraint | Resources |
| --- | --- | --- | --- | --- | --- | --- | --- | --- | --- | --- | --- |
| 1 | 1 | **CookieReader** | 101d? | 2017-03-01 08:00 | 2017-07-19 17:00 |  | 2017-03-01 08:00 | 2017-07-19 17:00 |  | start no earlier than 2017-03-01 08:00 |  |
| 2 | 1.1 | **Concepção** | 13d? | 2017-03-13 08:00 | 2017-03-29 17:00 |  | 2017-03-13 08:00 | 2017-03-29 17:00 | 3029d |  |  |
| 3 | 1.1.1 | Modelo Conceitual | 3d? | 2017-03-13 08:00 | 2017-03-15 17:00 |  | 2017-03-13 08:00 | 2017-03-15 17:00 | 3029d | start no earlier than 2017-03-13 08:00 | Carlos Eduardo Binoti de Castro; Equipamento 1 |
| 4 | 1.1.2 | Documento de Requisitos | 3d? | 2017-03-16 08:00 | 2017-03-20 17:00 | 3 | 2017-03-16 08:00 | 2017-03-20 17:00 | 3029d | start no earlier than 2017-03-15 08:00 | Carlos Eduardo Binoti de Castro; Equipamento 1 |
| 5 | 1.1.3 | Documento de Organização dos Requisitos | 2d? | 2017-03-21 08:00 | 2017-03-22 17:00 | 4 | 2017-03-21 08:00 | 2017-03-22 17:00 | 3029d | start no earlier than 2017-03-21 08:00 | Carlos Eduardo Binoti de Castro; Equipamento 1 |
| 6 | 1.1.4 | Plano de Projeto | 2d? | 2017-03-23 08:00 | 2017-03-24 17:00 | 5 | 2017-03-23 08:00 | 2017-03-24 17:00 | 3029d | start no earlier than 2017-03-23 08:00 | Carlos Eduardo Binoti de Castro; Equipamento 1 |
| 7 | 1.1.5 | Cronograma do Projeto | 3d? | 2017-03-27 08:00 | 2017-03-29 17:00 | 6 | 2017-03-27 08:00 | 2017-03-29 17:00 | 3029d | start no earlier than 2017-03-01 08:00 | Carlos Eduardo Binoti de Castro; Equipamento 1 |
| 8 | 1.2 | **Elaboração i - Análise** | 5d? | 2017-04-03 08:00 | 2017-04-07 17:00 | 2 | 2017-04-03 08:00 | 2017-04-07 17:00 | 2854d | start no earlier than 2017-04-03 08:00 |  |
| 9 | 1.2.1 | Descrição dos Casos de Uso | 3d? | 2017-04-03 08:00 | 2017-04-05 17:00 |  | 2017-04-03 08:00 | 2017-04-05 17:00 | 2854d | start no earlier than 2017-04-03 08:00 | Carlos Eduardo Binoti de Castro; Equipamento 1 |
| 10 | 1.2.2 | Diagrama de Casos de Uso | 2d? | 2017-04-06 08:00 | 2017-04-07 17:00 | 9 | 2017-04-06 08:00 | 2017-04-07 17:00 | 2854d |  | Carlos Eduardo Binoti de Castro; Equipamento 1 |
| 11 | 1.3 | **Elaboração ii - Projeto** | 14.25d? | 2017-04-10 08:00 | 2017-04-28 10:00 | 8 | 2017-04-10 08:00 | 2017-04-28 10:00 | 2179d |  |  |
| 12 | 1.3.1 | Diagrama de Classes de Projeto | 2d? | 2017-04-10 08:00 | 2017-04-11 17:00 |  | 2017-04-10 08:00 | 2017-04-11 17:00 | 3104d |  | Carlos Eduardo Binoti de Castro; Equipamento 1 |
| 13 | 1.3.2 | Banco de Dados | 3d? | 2017-04-12 08:00 | 2017-04-14 17:00 | 12 | 2017-04-12 08:00 | 2017-04-14 17:00 | 3104d |  | Carlos Eduardo Binoti de Castro; Equipamento 1 |
| 14 | 1.3.3 | Gerar Código (Alto nível) | 1d? | 2017-04-18 08:00 | 2017-04-18 17:00 |  | 2017-04-18 08:00 | 2017-04-18 17:00 | 2904d | start no earlier than 2017-04-18 08:00 | Carlos Eduardo Binoti de Castro |
| 15 | 1.3.4 | Elaborar Interface Gráfica | 7d? | 2017-04-19 08:00 | 2017-04-28 10:00 |  | 2017-04-19 08:00 | 2017-04-28 10:00 | 2179d | start no earlier than 2017-04-19 08:00 | Carlos Eduardo Binoti de Castro |
| 16 | 1.4 | **Iteração 1** | 4.25d? | 2017-05-03 08:00 | 2017-05-09 10:00 | 11 | 2017-05-03 08:00 | 2017-05-09 10:00 | 1904d |  |  |
| 17 | 1.4.1 | **Construção** | 4.25d? | 2017-05-03 08:00 | 2017-05-09 10:00 |  | 2017-05-03 08:00 | 2017-05-09 10:00 | 1904d |  |  |
| 18 | 1.4.1.1 | **Implementar e Testar** | 4.25d? | 2017-05-03 08:00 | 2017-05-09 10:00 |  | 2017-05-03 08:00 | 2017-05-09 10:00 | 1904d |  |  |
| 19 | 1.4.1.1.1 | [RF33] - Adicionar Escaneamento aos favoritos | 2d? | 2017-05-03 08:00 | 2017-05-04 17:00 |  | 2017-05-03 08:00 | 2017-05-04 17:00 | 1904d | start no earlier than 2017-05-03 08:00 | Carlos Eduardo Binoti de Castro; Equipamento 1 |
| 20 | 1.4.1.1.2 | [RF29] - Entrar no Sistema | 1.25d? | 2017-05-05 08:00 | 2017-05-08 10:00 | 19 | 2017-05-05 08:00 | 2017-05-08 10:00 | 1879d |  | Carlos Eduardo Binoti de Castro; Equipamento 1 |
| 21 | 1.4.1.1.3 | [RF34] - Sair do Sistema | 1d? | 2017-05-08 10:00 | 2017-05-09 10:00 | 20 | 2017-05-08 10:00 | 2017-05-09 10:00 | 1904d |  | Carlos Eduardo Binoti de Castro; Equipamento 1 |
| 22 | 1.5 | **Iteração 2** | 12d? | 2017-05-09 10:00 | 2017-05-25 10:00 | 16 | 2017-05-09 10:00 | 2017-05-25 10:00 | 1904d |  |  |
| 23 | 1.5.1 | **Construção** | 12d? | 2017-05-09 10:00 | 2017-05-25 10:00 |  | 2017-05-09 10:00 | 2017-05-25 10:00 | 1904d |  |  |
| 24 | 1.5.1.1 | **Implementar e Testar** | 12d? | 2017-05-09 10:00 | 2017-05-25 10:00 |  | 2017-05-09 10:00 | 2017-05-25 10:00 | 1904d |  |  |
| 25 | 1.5.1.1.1 | [RF32] - Ordenar Histórico de Escaneamento do Melhor Biscoito ao Pior Para a DCNT Selecionada | 4d? | 2017-05-09 10:00 | 2017-05-15 10:00 |  | 2017-05-09 10:00 | 2017-05-15 10:00 | 1904d | start no earlier than 2017-05-08 08:00 | Carlos Eduardo Binoti de Castro; Equipamento 1 |
| 26 | 1.5.1.1.2 | [RF30] - Escanear Biscoito | 5d? | 2017-05-15 10:00 | 2017-05-22 10:00 | 25 | 2017-05-15 10:00 | 2017-05-22 10:00 | 1904d |  | Carlos Eduardo Binoti de Castro; Equipamento 1 |
| 27 | 1.5.1.1.3 | [RF31] - Deletar Escaneamento do Histórico | 3d? | 2017-05-22 10:00 | 2017-05-25 10:00 | 26 | 2017-05-22 10:00 | 2017-05-25 10:00 | 1904d |  | Carlos Eduardo Binoti de Castro; Equipamento 1 |

Notes:
- 3: Diagrama UML (Linguagem de Modelagem Unificada). Este diagrama é uma primeira versão do diagrama de classes. Nele encontram-se apenas as classes principais.
- 4: Este documento contém a descrição de todas as funcionalidades do sistema.
- 5: Este documento organiza os requisitos por: Casos de Uso (Requisitos mais complexos: Seção 3.2 do Documento de Requisitos Manutenção de Cadastros: Seção 3.1 do Documento de Requisitos Relatórios/Listagens: Seção 3.3 do Documento de Requisitos
- 6: Este documento descreve o planejamento para o desenvolvimento do projeto do sistema especificado pelo documento de requisitos. Neste documento encontramos planos para as principais áreas de conhecimento da gerência de projetos: Gerenciamento de Escopo Gerenciamento de Tempo Gerenciamento de Custo Gerenciamento de Qualidade Gerenciamento de Recursos Gerenciamento de Comunicações Gerenciamento de Risco
- 9: Descrição passo a passo de todos os casos de uso identificados no sistema a ser desenvolvido.
- 10: Diagrama UML (Linguagem de Modelagem Unificada). Tem a finalidade principal de apresentar graficamente as funcionalidades mais complexas do sistema a ser desenvolvido.
- 12: Diagrama UML (Linguagem de Modelagem Unificada). Este diagrama é diagrama de classes do sistema. Nele encontram-se todas as classes do sistema, bem como seus atributos (características).
- 13: Banco de Dados do Sistema.
- 16: Cada Iteração representa uma porção do sistema a ser desenvolvida. Em cada Iteração são considerados um conjunto de requisitos. A ordem dos requisitos a serem desenvolvidos leva em consideração o Documento de Organização dos Requisitos. 1) Requisitos ligados a Casos de Uso 2) Requisitos ligados a Cadastros 3) Requisitos ligados a Relatórios/Listagens

| ID | WBS | Task | Duration | Start | Finish | Predecessors | Baseline start | Baseline finish | Total slack | Constraint | Resources |
| --- | --- | --- | --- | --- | --- | --- | --- | --- | --- | --- | --- |
| 28 | 1.6 | **Iteração 3** | 16.71d? | 2017-05-29 08:00 | 2017-06-20 14:40 | 22 | 2017-05-29 08:00 | 2017-06-20 14:40 | 1704d |  |  |
| 29 | 1.6.1 | **Construção** | 16.71d? | 2017-05-29 08:00 | 2017-06-20 14:40 |  | 2017-05-29 08:00 | 2017-06-20 14:40 | 1704d |  |  |
| 30 | 1.6.1.1 | **Implementar e Testar** | 16.71d? | 2017-05-29 08:00 | 2017-06-20 14:40 |  | 2017-05-29 08:00 | 2017-06-20 14:40 | 1704d |  |  |
| 31 | 1.6.1.1.1 | [RF25], [RF26], [RF27],[RF28] - CRUD Usuário | 2.28d? | 2017-05-29 08:00 | 2017-05-31 10:14 |  | 2017-05-29 08:00 | 2017-05-31 10:14 | 1729d | start no earlier than 2017-05-29 08:00 | Carlos Eduardo Binoti de Castro; Equipamento 1 |
| 32 | 1.6.1.1.2 | [RF05], [RF06], [RF07], [RF08] - CRUD Nutriente | 2.28d? | 2017-05-31 10:14 | 2017-06-02 13:28 | 31 | 2017-05-31 10:14 | 2017-06-02 13:28 | 1754d | start no earlier than 2017-05-30 08:00 | Carlos Eduardo Binoti de Castro; Equipamento 1 |
| 33 | 1.6.1.1.3 | [RF21], [RF22], [RF23], [RF24] - CRUD Empresa | 2.53d? | 2017-06-02 13:28 | 2017-06-07 08:43 | 32 | 2017-06-02 13:28 | 2017-06-07 08:43 | 1729d | start no earlier than 2017-06-01 08:00 | Carlos Eduardo Binoti de Castro; Equipamento 1 |
| 34 | 1.6.1.1.4 | [RF17], [RF18], [RF19], [RF20] - CRUD UF | 2.28d? | 2017-06-07 08:43 | 2017-06-09 10:57 | 33 | 2017-06-07 08:43 | 2017-06-09 10:57 | 1729d |  | Carlos Eduardo Binoti de Castro; Equipamento 1 |
| 35 | 1.6.1.1.5 | [RF13],[ RF14], [RF15],[ RF16] - CRUD Cidade | 2.53d? | 2017-06-09 10:57 | 2017-06-13 16:12 | 34 | 2017-06-09 10:57 | 2017-06-13 16:12 | 1704d |  | Carlos Eduardo Binoti de Castro; Equipamento 1 |
| 36 | 1.6.1.1.6 | [RF09], [RF10], [RF11],[RF12] - CRUD DCNT | 2.28d? | 2017-06-13 16:12 | 2017-06-16 09:26 | 35 | 2017-06-13 16:12 | 2017-06-16 09:26 | 1729d |  | Carlos Eduardo Binoti de Castro; Equipamento 1 |
| 37 | 1.6.1.1.7 | [RF01], [RF02], [RF03],[RF04] - CRUD Biscoito | 2.53d | 2017-06-16 09:26 | 2017-06-20 14:40 | 36 | 2017-06-16 09:26 | 2017-06-20 14:40 | 1704d |  | Carlos Eduardo Binoti de Castro; Equipamento 1 |
| 38 | 1.7 | **Iteração 4** | 4d? | 2017-06-28 08:00 | 2017-07-03 17:00 | 28 | 2017-06-28 08:00 | 2017-07-03 17:00 | 1100d |  |  |
| 39 | 1.7.1 | **Construção** | 4d? | 2017-06-28 08:00 | 2017-07-03 17:00 | 29 | 2017-06-28 08:00 | 2017-07-03 17:00 | 1100d |  |  |
| 40 | 1.7.1.1 | **Implementar e Testar** | 4d? | 2017-06-28 08:00 | 2017-07-03 17:00 |  | 2017-06-28 08:00 | 2017-07-03 17:00 | 1100d |  |  |
| 41 | 1.7.1.1.1 | [RF35] - Listar Histórico De Escaneamento por Usuario | 1d? | 2017-06-28 08:00 | 2017-06-28 17:00 |  | 2017-06-28 08:00 | 2017-06-28 17:00 | 1200d | start no earlier than 2017-06-28 08:00 | Carlos Eduardo Binoti de Castro; Equipamento 1 |
| 42 | 1.7.1.1.2 | [RF37] - Listar Escaneamentos Deletados por Usuario | 1d? | 2017-06-29 08:00 | 2017-06-29 17:00 | 41 | 2017-06-29 08:00 | 2017-06-29 17:00 | 1200d | start no earlier than 2017-06-29 08:00 | Carlos Eduardo Binoti de Castro; Equipamento 1 |
| 43 | 1.7.1.1.3 | [RF36] - Listar Empresas com Biscoito mais Escaneado | 1d? | 2017-07-03 08:00 | 2017-07-03 17:00 | 42 | 2017-07-03 08:00 | 2017-07-03 17:00 | 1100d | start no earlier than 2017-07-03 08:00 | Carlos Eduardo Binoti de Castro; Equipamento 1 |
| 44 | 1.8 | **Transição** | 1d? | 2017-07-04 08:00 | 2017-07-04 17:00 | 39 | 2017-07-04 08:00 | 2017-07-04 17:00 | 1100d |  |  |
| 45 | 1.8.1 | Instalação do Sistema no Cliente | 1d? | 2017-07-04 08:00 | 2017-07-04 17:00 |  | 2017-07-04 08:00 | 2017-07-04 17:00 | 1100d |  | Carlos Eduardo Binoti de Castro; Equipamento 1 |
| 47 | 1.9 | **Recursos - Infra-Estrutura** | 0d | 2017-03-01 08:00 | 2017-03-01 08:00 |  | 2017-03-01 08:00 | 2017-03-01 08:00 | 10100d |  |  |
| 48 | 1.9.1 | Equipamentos | 0d | 2017-03-01 08:00 | 2017-03-01 08:00 |  | 2017-03-01 08:00 | 2017-03-01 08:00 | 10100d |  |  |
| 49 | 1.9.2 | Ferramentas | 0d | 2017-03-01 08:00 | 2017-03-01 08:00 |  | 2017-03-01 08:00 | 2017-03-01 08:00 | 10100d |  |  |
| 51 | 1.10 | **Monitoramento e Controle** | 101d? | 2017-03-01 08:00 | 2017-07-19 17:00 |  | 2017-03-01 08:00 | 2017-07-19 17:00 |  |  |  |
| 52 | 1.10.1 | **Reuniões** | 95.5d | 2017-03-03 13:00 | 2017-07-14 17:00 |  | 2017-03-03 13:00 | 2017-07-14 17:00 | 300d |  |  |
| 53 | 1.10.1.1 | **Reuniões da Equipe Técnica** | 89.5d | 2017-03-03 15:00 | 2017-07-07 10:00 |  | 2017-03-03 15:00 | 2017-07-07 10:00 | 875d |  |  |
| 54 | 1.10.1.1.1 | Reunião 1 | 0.25d | 2017-03-03 15:00 | 2017-03-03 17:00 |  | 2017-03-03 15:00 | 2017-03-03 17:00 | 9800d | start no earlier than 2017-03-03 15:00 | Carlos Eduardo Binoti de Castro; Rafael Vargas |
| 55 | 1.10.1.1.2 | Reunião 3 | 0.25d | 2017-03-17 15:00 | 2017-03-17 17:00 |  | 2017-03-17 15:00 | 2017-03-17 17:00 | 8800d | start no earlier than 2017-03-17 15:00 | Carlos Eduardo Binoti de Castro; Rafael Vargas |
| 56 | 1.10.1.1.3 | Reunião 5 | 0.25d | 2017-03-31 15:00 | 2017-03-31 17:00 |  | 2017-03-31 15:00 | 2017-03-31 17:00 | 7800d | start no earlier than 2017-03-31 15:00 | Rafael Vargas; Carlos Eduardo Binoti de Castro |
| 57 | 1.10.1.1.4 | Reunião 7 | 0.25d | 2017-04-14 15:00 | 2017-04-14 17:00 |  | 2017-04-14 15:00 | 2017-04-14 17:00 | 6800d | start no earlier than 2017-04-14 15:00 | Carlos Eduardo Binoti de Castro; Rafael Vargas |
| 58 | 1.10.1.1.5 | Reunião 9 | 0.25d | 2017-04-28 15:00 | 2017-04-28 17:00 |  | 2017-04-28 15:00 | 2017-04-28 17:00 | 5800d | start no earlier than 2017-04-28 15:00 | Carlos Eduardo Binoti de Castro; Rafael Vargas |
| 59 | 1.10.1.1.6 | Reunião 11 | 0.25d | 2017-05-12 15:00 | 2017-05-12 17:00 |  | 2017-05-12 15:00 | 2017-05-12 17:00 | 4800d | start no earlier than 2017-05-12 15:00 | Carlos Eduardo Binoti de Castro; Rafael Vargas |
| 60 | 1.10.1.1.7 | Reunião 13 | 0.25d | 2017-05-26 15:00 | 2017-05-26 17:00 |  | 2017-05-26 15:00 | 2017-05-26 17:00 | 3800d | start no earlier than 2017-05-26 15:00 | Carlos Eduardo Binoti de Castro; Rafael Vargas |
| 61 | 1.10.1.1.8 | Reunião 15 | 0.25d | 2017-06-09 15:00 | 2017-06-09 17:00 |  | 2017-06-09 15:00 | 2017-06-09 17:00 | 2800d | start no earlier than 2017-06-09 15:00 | Carlos Eduardo Binoti de Castro; Rafael Vargas |
| 62 | 1.10.1.1.9 | Reunião 17 | 0.25d | 2017-06-23 15:00 | 2017-06-23 17:00 |  | 2017-06-23 15:00 | 2017-06-23 17:00 | 1800d | start no earlier than 2017-06-23 15:00 | Carlos Eduardo Binoti de Castro; Rafael Vargas |
| 63 | 1.10.1.1.10 | Reunião 19 | 0.25d | 2017-07-07 08:00 | 2017-07-07 10:00 |  | 2017-07-07 08:00 | 2017-07-07 10:00 | 875d | start no earlier than 2017-07-07 08:00 | Carlos Eduardo Binoti de Castro; Rafael Vargas |

Notes:
- 47: Nesta atividade serão armazenadas informações dos equipamentos e ferramentas utilizados no desenvolvimento do sistema. Isto é muito importante para que seja levado em consideração no custo do projeto, os gastos com Ferramentas (licenças de softwares que que tiveram de ser compradas) e Depreciações de Equipamentos (o custo ou a despesa decorrentes do desgaste ou da obsolescência dos ativos imobilizados (máquinas) da empresa.
- 52: Esta tarefa representa dos as reuniões que acontecerão durante o desenvolvimento do projeto.

| ID | WBS | Task | Duration | Start | Finish | Baseline start | Baseline finish | Total slack | Constraint | Resources |
| --- | --- | --- | --- | --- | --- | --- | --- | --- | --- | --- |
| 64 | 1.10.1.2 | **Reuniões de Apresentação do Status do Projeto** | 90.25d | 2017-03-03 13:00 | 2017-07-07 15:00 | 2017-03-03 13:00 | 2017-07-07 15:00 | 825d | start no earlier than 2017-03-01 08:00 |  |
| 65 | 1.10.1.2.1 | Reunião 1 | 0.25d | 2017-03-03 13:00 | 2017-03-03 15:00 | 2017-03-03 13:00 | 2017-03-03 15:00 | 9825d | start no earlier than 2017-03-03 13:00 | Rafael Vargas |
| 66 | 1.10.1.2.2 | Reunião 2 | 0.25d | 2017-04-07 13:00 | 2017-04-07 15:00 | 2017-04-07 13:00 | 2017-04-07 15:00 | 7325d | start no earlier than 2017-04-07 13:00 | Rafael Vargas |
| 67 | 1.10.1.2.3 | Reunião 3 | 0.25d | 2017-05-05 13:00 | 2017-05-05 15:00 | 2017-05-05 13:00 | 2017-05-05 15:00 | 5325d | start no earlier than 2017-05-05 13:00 | Rafael Vargas |
| 68 | 1.10.1.2.4 | Reunião 4 | 0.25d | 2017-06-02 13:00 | 2017-06-02 15:00 | 2017-06-02 13:00 | 2017-06-02 15:00 | 3325d | start no earlier than 2017-06-02 13:00 | Rafael Vargas |
| 69 | 1.10.1.2.5 | Reunião 5 | 0.25d | 2017-07-07 13:00 | 2017-07-07 15:00 | 2017-07-07 13:00 | 2017-07-07 15:00 | 825d | start no earlier than 2017-07-07 13:00 | Rafael Vargas |
| 70 | 1.10.1.3 | **Reuniões de Qualidade** | 90.25d | 2017-03-10 15:00 | 2017-07-14 17:00 | 2017-03-10 15:00 | 2017-07-14 17:00 | 300d |  |  |
| 71 | 1.10.1.3.1 | Reunião 1 | 0.25d | 2017-03-10 15:00 | 2017-03-10 17:00 | 2017-03-10 15:00 | 2017-03-10 17:00 | 9300d | start no earlier than 2017-03-10 15:00 | Rafael Vargas |
| 72 | 1.10.1.3.2 | Reunião 2 | 0.25d | 2017-04-07 15:00 | 2017-04-07 17:00 | 2017-04-07 15:00 | 2017-04-07 17:00 | 7300d | start no earlier than 2017-04-07 15:00 | Rafael Vargas |
| 73 | 1.10.1.3.3 | Reunião 3 | 0.25d | 2017-05-05 15:00 | 2017-05-05 17:00 | 2017-05-05 15:00 | 2017-05-05 17:00 | 5300d | start no earlier than 2017-05-05 15:00 | Rafael Vargas |
| 74 | 1.10.1.3.4 | Reunião 4 | 0.25d | 2017-06-02 15:00 | 2017-06-02 17:00 | 2017-06-02 15:00 | 2017-06-02 17:00 | 3300d | start no earlier than 2017-06-02 15:00 | Rafael Vargas |
| 75 | 1.10.1.3.5 | Reunião 5 | 0.25d | 2017-07-14 15:00 | 2017-07-14 17:00 | 2017-07-14 15:00 | 2017-07-14 17:00 | 300d | start no earlier than 2017-07-14 15:00 | Rafael Vargas |
| 76 | 1.10.2 | **Cronograma e Orçamento** | 101d? | 2017-03-01 08:00 | 2017-07-19 17:00 | 2017-03-01 08:00 | 2017-07-19 17:00 |  |  |  |
| 77 | 1.10.2.1 | Acompanhamento Diário | 101d? | 2017-03-01 08:00 | 2017-07-19 17:00 | 2017-03-01 08:00 | 2017-07-19 17:00 |  |  | Rafael Vargas; Equipamento 2 |
| 79 | 1.11 | Treinamentos | 0d | 2017-03-01 08:00 | 2017-03-01 08:00 | 2017-03-01 08:00 | 2017-03-01 08:00 | 10100d |  |  |

Notes:
- 76: Esta atividade representa o tempo necessário que o Gerente de Projeto, utiliza diariamente na finalidade de acompanhar o andamento do desenvolvimento do projeto
- 79: Devem ser especificados aqui todos os treinamentos necessários para o desenvolvimento do projeto.
